Schedule from GanttProject, 2021-03-15 to 2021-09-13.

## Calendars

- Project calendar: Mon-Fri working; Sat-Sun off.

## Schedule

| ID | WBS | Task | Type | Duration | Start | Finish | Predecessors |
| --- | --- | --- | --- | --- | --- | --- | --- |
| 1 | 1 | **Etude préliminaire** |  | 20d | 2021-03-15 | 2021-04-09 |  |
| 2 | 1.1 | Prise de connaissance du sujet |  | 10d | 2021-03-15 | 2021-03-26 |  |
| 3 | 1.2 | Réunion Kick Off | milestone | 0d | 2021-03-23 | 2021-03-23 |  |
| 4 | 1.3 | Rédaction des spécifications |  | 8d | 2021-03-24 | 2021-04-02 |  |
| 5 | 1.4 | Rédaction d'un plan de vérification |  | 10d | 2021-03-29 | 2021-04-09 |  |
| 6 | 1.5 | Validation spécifications | milestone | 0d | 2021-04-06 | 2021-04-06 |  |
| 7 | 2 | **Hardware** |  | 120d | 2021-03-29 | 2021-09-10 |  |
| 8 | 2.1 | **Carte interface** |  | 100d | 2021-03-29 | 2021-08-13 |  |
| 9 | 2.1.1 | Déterminer les spécfications des cartes |  | 15d | 2021-03-29 | 2021-04-16 |  |
| 10 | 2.1.2 | Conception des circuits électroniques |  | 12d | 2021-04-15 | 2021-04-30 |  |
| 11 | 2.1.3 | Validation de circuits | milestone | 0d | 2021-05-03 | 2021-05-03 | 10 |
| 12 | 2.1.4 | Redaction banc de test |  | 3d | 2021-05-05 | 2021-05-07 |  |
| 13 | 2.1.5 | Recherche de composants (COTS) |  | 5d | 2021-05-03 | 2021-05-07 |  |
| 14 | 2.1.6 | Réalisation shémas électroniques |  | 19d | 2021-05-10 | 2021-06-03 |  |
| 15 | 2.1.7 | Design PCB + achat |  | 11d | 2021-06-04 | 2021-06-18 |  |
| 16 | 2.1.8 | Temps de livraison |  | 11d | 2021-06-18 | 2021-07-02 |  |
| 17 | 2.1.9 | Commande V1 | milestone | 0d | 2021-06-21 | 2021-06-21 | 15 |
| 18 | 2.1.10 | Montage + Vérifications de la carte |  | 11d | 2021-06-25 | 2021-07-09 |  |
| 19 | 2.1.11 | Validation carte PCB | milestone | 0d | 2021-07-12 | 2021-07-12 | 18 |
| 20 | 2.1.12 | V2 ? |  | 22d | 2021-07-15 | 2021-08-13 |  |
| 21 | 2.2 | **Balise** |  | 103d | 2021-03-29 | 2021-08-18 |  |
| 22 | 2.2.1 | Etude de faisabilité |  | 24d | 2021-03-29 | 2021-04-29 |  |
| 23 | 2.2.2 | réalisation |  | 35d | 2021-06-21 | 2021-08-06 |  |
| 24 | 2.2.3 | phase de test |  | 8d | 2021-08-09 | 2021-08-18 |  |

| ID | WBS | Task | Type | Duration | Start | Finish | Predecessors |
| --- | --- | --- | --- | --- | --- | --- | --- |
| 25 | 2.3 | **Station de charge** |  | 43d | 2021-07-14 | 2021-09-10 |  |
| 26 | 2.3.1 | Etude de faisabilité |  | 21d | 2021-07-14 | 2021-08-11 |  |
| 27 | 2.3.2 | réalisation |  | 15d | 2021-08-02 | 2021-08-20 |  |
| 28 | 2.3.3 | phase de test |  | 16d | 2021-08-20 | 2021-09-10 |  |
| 29 | 3 | **Software** |  | 109d | 2021-03-29 | 2021-08-26 |  |
| 30 | 3.1 | création/installation linux embarqué U96 |  | 14d | 2021-03-29 | 2021-04-15 |  |
| 31 | 3.2 | installation de ROS |  | 2d | 2021-04-16 | 2021-04-19 | 30 |
| 32 | 3.3 | OS & ROS installé | milestone | 0d | 2021-04-20 | 2021-04-20 | 6, 31 |
| 33 | 3.4 | **communiquation ROS <-> HW** |  | 39d | 2021-04-20 | 2021-06-11 |  |
| 34 | 3.4.1 | com/driver capteur <-> ROS |  | 10d | 2021-04-20 | 2021-05-03 | 32 |
| 35 | 3.4.2 | com/driver actionneur <-> ROS |  | 10d | 2021-05-04 | 2021-05-17 | 32, 34 |
| 36 | 3.4.3 | test unitaire communication |  | 5d | 2021-06-07 | 2021-06-11 | 34, 35, 77 |
| 37 | 3.5 | communication HW OK | milestone | 0d | 2021-06-14 | 2021-06-14 | 36 |
| 38 | 3.6 | **Localisation fonctionnelle ROS** |  | 13d | 2021-06-14 | 2021-06-30 |  |
| 39 | 3.6.1 | Cartographie SLAM |  | 2d | 2021-06-14 | 2021-06-15 | 37 |
| 40 | 3.6.2 | AMCL lidar |  | 2d | 2021-06-16 | 2021-06-17 | 39 |
| 41 | 3.6.3 | odométrie encodeur |  | 2d | 2021-06-18 | 2021-06-21 | 40 |
| 42 | 3.6.4 | fusion multicapteur EKF |  | 2d | 2021-06-22 | 2021-06-23 | 41 |
| 43 | 3.6.5 | test localisation |  | 5d | 2021-06-24 | 2021-06-30 | 40, 42 |
| 44 | 3.7 | localisation OK | milestone | 0d | 2021-07-01 | 2021-07-01 | 43 |
| 45 | 3.8 | **navigation fonctionnelle ROS** |  | 26d | 2021-07-01 | 2021-08-05 |  |
| 46 | 3.8.1 | paramétrage global planner |  | 3d | 2021-07-01 | 2021-07-05 | 32, 44 |
| 47 | 3.8.2 | paramétrage local planer |  | 3d | 2021-07-06 | 2021-07-08 | 46 |
| 48 | 3.8.3 | gestionnaire de mission |  | 5d | 2021-07-09 | 2021-07-15 | 32, 47 |
| 49 | 3.8.4 | gestionnaire d'anomalie |  | 5d | 2021-07-16 | 2021-07-22 | 32, 48 |
| 50 | 3.8.5 | gestionnaire de démarrage |  | 5d | 2021-07-23 | 2021-07-29 | 49 |
| 51 | 3.8.6 | test navigation |  | 5d | 2021-07-30 | 2021-08-05 | 44, 47, 48, 49, 50 |
| 52 | 3.9 | navigation OK | milestone | 0d | 2021-08-06 | 2021-08-06 | 51 |

| ID | WBS | Task | Type | Duration | Start | Finish | Predecessors |
| --- | --- | --- | --- | --- | --- | --- | --- |
| 53 | 3.10 | **IHM mvp** |  | 35d | 2021-04-06 | 2021-05-24 |  |
| 54 | 3.10.1 | dévellopement front (interface) |  | 10d | 2021-04-06 | 2021-04-19 | 6 |
| 55 | 3.10.2 | mise en place réseaux |  | 5d | 2021-04-20 | 2021-04-26 | 6, 54 |
| 56 | 3.10.3 | communication IHM <-> ROS |  | 3d | 2021-04-27 | 2021-04-29 | 55 |
| 57 | 3.10.4 | streaming vidéo |  | 2d | 2021-05-14 | 2021-05-17 | 56, 72 |
| 58 | 3.10.5 | control manuel (clavier) |  | 2d | 2021-04-30 | 2021-05-03 | 56 |
| 59 | 3.10.6 | test IHM mvp |  | 5d | 2021-05-18 | 2021-05-24 | 54, 55, 57, 58 |
| 60 | 3.11 | IHM mvp OK | milestone | 0d | 2021-05-25 | 2021-05-25 | 59 |
| 61 | 3.12 | **IHM** |  | 5d | 2021-05-25 | 2021-05-31 |  |
| 62 | 3.12.1 | web RVIZ |  | 3d | 2021-05-25 | 2021-05-27 | 60 |
| 63 | 3.12.2 | affichage du niveau de batterie |  | 1d | 2021-05-25 | 2021-05-25 | 60 |
| 64 | 3.12.3 | consultation des logs vidéo |  | 5d | 2021-05-25 | 2021-05-31 | 60 |
| 65 | 3.12.4 | édition de ronde |  | 5d | 2021-05-25 | 2021-05-31 | 60 |
| 66 | 3.13 | IHM OK | milestone | 0d | 2021-06-01 | 2021-06-01 | 62, 63, 64, 65 |
| 67 | 3.14 | tests intégrations |  | 15d | 2021-08-06 | 2021-08-26 | 32, 37, 44, 52, 60, 66 |
| 68 | 4 | **FPGA** |  | 120d | 2021-03-29 | 2021-09-10 |  |
| 69 | 4.1 | **Acquisition vidéo** |  | 80d | 2021-03-29 | 2021-07-16 |  |
| 70 | 4.1.1 | Acquisition flux vidéo MIPI |  | 20d | 2021-03-29 | 2021-04-23 |  |
| 71 | 4.1.2 | Demosaiquer l'image |  | 14d | 2021-04-26 | 2021-05-13 | 70 |
| 72 | 4.1.3 | Flux video | milestone | 0d | 2021-05-14 | 2021-05-14 | 71 |
| 73 | 4.1.4 | Traitement basique |  | 20d | 2021-06-07 | 2021-07-02 | 72 |
| 74 | 4.1.5 | Auto-focus |  | 10d | 2021-07-05 | 2021-07-16 | 73 |
| 75 | 4.2 | Interface GPIO |  | 5d | 2021-05-03 | 2021-05-07 | 11 |
| 76 | 4.3 | **Devloppement protocole de communication** |  | 15d | 2021-05-17 | 2021-06-04 | 11 |
| 77 | 4.3.1 | UART |  | 15d | 2021-05-17 | 2021-06-04 |  |
| 78 | 4.4 | Fonctions de délestage PS |  | 40d | 2021-07-19 | 2021-09-10 |  |
| 79 | 5 | fin stage | milestone | 0d | 2021-09-13 | 2021-09-13 |  |
